# PERT

Schedule from MS Project, 2018-03-01 to 2019-07-08.

## Calendars

- Standard: Mon-Fri 08:00-12:00, 13:00-17:00; Sat-Sun off.

## Resources

| Resource | Unit |
| --- | --- |
| Neo Mohapi |  |
| Emelia Mohapi |  |
| Julie Smith |  |
| Kabelo Mohapi |  |
| Miles Mchunu |  |
| Sylvia Moore |  |
| Blantina Morake |  |
| Kashann Naidu |  |
| Jackie Whiley |  |
| Jenny Gannt |  |
| Financial Advisor |  |
| Daniel Lee |  |
| Surveyor |  |
| Architect |  |
| Ollie Volta |  |
| Randy Schepers |  |
| Andy Johns |  |
| Amos Mokoena |  |
| Justine Leakey |  |
| Manzi Nisela |  |
| Derek Rivett |  |
| Elias Makoti |  |
| Local authorities |  |
| Procurement Department |  |
| Accounting Department |  |
| Advertising Department |  |
| Safety manager |  |
| MindGenius Software and Licence | Package |
| Production Train Software and Licence | Package |
| Achitectural Company |  |
| Plumbing Company |  |
| Cement | kilogram |
| Bricks | Pallet |
| Sand | kilogram |
| Portable Water | litre |
| Binding Wires | metre |
| Plywood | metre |
| Paint Thiner | litre |
| Paint | litre |
| Pipe Fittings | metre |
| Connectors | unit |
| Couplings | unit |
| Valves | unit |
| Electrical Wires | metre |
| Light Fixtures | unit |
| Metal furring | metre |
| Light Fibre Cement Board | metre |
| Precast Concrete |  |
| Steel Piles |  |
| Wood Piles |  |
| Fabricated Steel |  |
| Extra Labour |  |

## Schedule

| ID | WBS | Task | Duration | Start | Finish | Predecessors | Baseline start | Baseline finish | Baseline duration | Total slack | Constraint | Resources | Work |
| --- | --- | --- | --- | --- | --- | --- | --- | --- | --- | --- | --- | --- | --- |
| 1 | 1 | **Lehong 2019** | 352.83d? | 2018-03-01 | 2019-07-08 |  | 2018-03-01 | 2019-07-08 | 352.83d? | 0d |  |  | 8687.6h |
| 2 | 1.1 | **Planning** | 80d | 2018-03-01 | 2018-06-20 |  | 2018-03-01 | 2018-06-20 | 80d | 0d |  |  | 1397.33h |
| 3 | 1.1.1 | Decide on project concept | 1.33d | 2018-03-01 | 2018-03-02 |  | 2018-03-01 | 2018-03-02 | 1.33d | 0d | start no earlier than 2018-03-01 | Neo Mohapi; Emelia Mohapi; Julie Smith; Kabelo Mohapi; Miles Mchunu; Sylvia Moore; Blantina Morake; Kashann Naidu; Jackie Whiley | 96h |
| 4 | 1.1.2 | **Project research** | 8d | 2018-03-02 | 2018-03-14 |  | 2018-03-02 | 2018-03-14 | 8d | 0d |  |  | 84h |
| 5 | 1.1.2.1 | Consult with experience project manager | 5.5d | 2018-03-02 | 2018-03-09 | 3 | 2018-03-02 | 2018-03-09 | 5.5d | 0d | start no earlier than 2018-03-02 | Jenny Gannt | 44h |
| 6 | 1.1.2.2 | Consult with financial advisor | 2.5d | 2018-03-09 | 2018-03-14 | 5 | 2018-03-09 | 2018-03-14 | 2.5d | 0d |  | Financial Advisor; Accounting Department | 40h |
| 7 | 1.1.3 | **Project Charter** | 3.5d | 2018-03-14 | 2018-03-19 |  | 2018-03-14 | 2018-03-19 | 3.5d | 0d |  |  | 74.67h |
| 8 | 1.1.3.1 | Project scope/roles/responsibilites | 1.17d | 2018-03-14 | 2018-03-15 | 6 | 2018-03-14 | 2018-03-15 | 1.17d | 0d | start no earlier than 2018-03-13 | Sylvia Moore; Jackie Whiley | 18.67h |
| 9 | 1.1.3.2 | Identifying and reviewing risks | 1.17d | 2018-03-14 | 2018-03-15 | 6 | 2018-03-14 | 2018-03-15 | 1.17d | 0d | start no earlier than 2018-03-13 | Sylvia Moore; Jackie Whiley | 18.67h |
| 10 | 1.1.3.3 | Determine project timeline | 1.17d | 2018-03-15 | 2018-03-16 | 9, 8 | 2018-03-15 | 2018-03-16 | 1.17d | 0d |  | Sylvia Moore; Jackie Whiley | 18.67h |
| 11 | 1.1.3.4 | Final changes to charter | 1.17d | 2018-03-16 | 2018-03-19 | 9, 8, 10 | 2018-03-16 | 2018-03-19 | 1.17d | 0d | start no earlier than 2018-03-14 | Sylvia Moore; Jackie Whiley | 18.67h |
| 12 | 1.1.4 | Decide on preliminary budget | 1.17d | 2018-03-19 | 2018-03-20 | 11 | 2018-03-19 | 2018-03-20 | 1.17d | 0d | start no earlier than 2018-03-15 | Jackie Whiley; Neo Mohapi; Sylvia Moore | 28h |
| 13 | 1.1.5 | **Human Resource Management** | 8.5d | 2018-03-21 | 2018-04-02 |  | 2018-03-21 | 2018-04-02 | 8.5d | 0d |  |  | 117.33h |
| 14 | 1.1.5.1 | Aquire project team | 1.17d | 2018-03-21 | 2018-03-22 | 12 | 2018-03-21 | 2018-03-22 | 1.17d | 0d | start no earlier than 2018-03-16 | Blantina Morake; Sylvia Moore | 18.67h |
| 15 | 1.1.5.2 | Training of staff | 5d | 2018-03-22 | 2018-03-29 | 14 | 2018-03-22 | 2018-03-29 | 5d | 0d |  | Jenny Gannt; Blantina Morake | 80h |
| 16 | 1.1.5.3 | Manage project team | 2.33d | 2018-03-29 | 2018-04-02 | 15 | 2018-03-29 | 2018-04-02 | 2.33d | 0d |  | Sylvia Moore | 18.67h |
| 17 | 1.1.6 | **Engage contractors** | 52.67d | 2018-04-02 | 2018-06-14 |  | 2018-04-02 | 2018-06-14 | 52.67d | 0d |  |  | 884h |
| 18 | 1.1.6.1 | Quantify space requirements | 4.83d | 2018-04-02 | 2018-04-09 | 16 | 2018-04-02 | 2018-04-09 | 4.83d | 0d | start no earlier than 2018-03-28 | Miles Mchunu | 38.67h |
| 19 | 1.1.6.2 | **Bidding process** | 12.17d | 2018-04-09 | 2018-04-25 |  | 2018-04-09 | 2018-04-25 | 12.17d | 0d |  |  | 194.67h |
| 20 | 1.1.6.2.1 | Advertise bids | 5.5d | 2018-04-09 | 2018-04-16 | 18 | 2018-04-09 | 2018-04-16 | 5.5d | 0d | start no earlier than 2018-04-04 | Sylvia Moore; Advertising Department | 88h |
| 21 | 1.1.6.2.2 | interviews process | 5.5d | 2018-04-16 | 2018-04-24 | 20 | 2018-04-16 | 2018-04-24 | 5.5d | 0d |  | Blantina Morake; Sylvia Moore | 88h |
| 22 | 1.1.6.2.3 | Final decision | 1.17d | 2018-04-24 | 2018-04-25 | 21 | 2018-04-24 | 2018-04-25 | 1.17d | 0d |  | Blantina Morake; Sylvia Moore | 18.67h |
| 23 | 1.1.6.3 | **Contract negotiations** | 35.67d | 2018-04-25 | 2018-06-14 |  | 2018-04-25 | 2018-06-14 | 35.67d | 0d |  |  | 650.67h |
| 24 | 1.1.6.3.1 | Payment terms | 10d | 2018-04-25 | 2018-05-09 | 22 | 2018-04-25 | 2018-05-09 | 10d | 0d | start no earlier than 2018-04-19 | Jackie Whiley; Sylvia Moore; Procurement Department | 240h |
| 25 | 1.1.6.3.2 | Contract volume | 14.33d | 2018-05-09 | 2018-05-29 | 24 | 2018-05-09 | 2018-05-29 | 14.33d | 0d |  | Sylvia Moore; Jackie Whiley | 229.33h |
| 26 | 1.1.6.3.3 | Contract price | 10d | 2018-05-29 | 2018-06-12 | 25 | 2018-05-29 | 2018-06-12 | 10d | 0d |  | Sylvia Moore; Jackie Whiley | 160h |
| 27 | 1.1.6.3.4 | Signing of contract | 1.33d | 2018-06-12 | 2018-06-14 | 26 | 2018-06-12 | 2018-06-14 | 1.33d | 0d |  | Blantina Morake; Sylvia Moore | 21.33h |
| 28 | 1.1.7 | Work breakdown structure | 1.33d | 2018-06-14 | 2018-06-15 | 27 | 2018-06-14 | 2018-06-15 | 1.33d | 0d | start no earlier than 2018-06-07 | Sylvia Moore; MindGenius Software and Licence [1 Package] | 10.67h |

| ID | WBS | Task | Duration | Start | Finish | Predecessors | Baseline start | Baseline finish | Baseline duration | Total slack | Free slack | Constraint | Deadline | Resources | Work |
| --- | --- | --- | --- | --- | --- | --- | --- | --- | --- | --- | --- | --- | --- | --- | --- |
| 29 | 1.1.8 | **Financial planning** | 2.33d | 2018-06-15 | 2018-06-19 |  | 2018-06-15 | 2018-06-19 | 2.33d | 0d |  |  |  |  | 74.67h |
| 30 | 1.1.8.1 | List of expenses | 1.17d | 2018-06-15 | 2018-06-18 | 28 | 2018-06-15 | 2018-06-18 | 1.17d | 0d |  | start no earlier than 2018-06-08 |  | Jackie Whiley | 9.33h |
| 31 | 1.1.8.2 | Define cost of each expense | 1.17d | 2018-06-15 | 2018-06-18 | 28 | 2018-06-15 | 2018-06-18 | 1.17d | 0d |  | start no earlier than 2018-06-08 |  | Daniel Lee; Sylvia Moore; Procurement Department | 28h |
| 32 | 1.1.8.3 | Expense schedule | 1.17d | 2018-06-18 | 2018-06-19 | 31, 30 | 2018-06-18 | 2018-06-19 | 1.17d | 0d |  |  |  | Daniel Lee; Jackie Whiley | 18.67h |
| 33 | 1.1.8.4 | Final approval and sign off | 1.17d | 2018-06-18 | 2018-06-19 | 31 | 2018-06-18 | 2018-06-19 | 1.17d | 0d |  | start no earlier than 2018-06-11 |  | Jackie Whiley; Sylvia Moore | 18.67h |
| 34 | 1.1.9 | Planning meeting | 1.17d | 2018-06-19 | 2018-06-20 | 33, 32 | 2018-06-19 | 2018-06-20 | 1.17d | 0d |  | start no earlier than 2018-06-12 |  | Daniel Lee; Jackie Whiley; Sylvia Moore | 28h |
| 35 | 1.2 | **Design** | 28d | 2018-06-21 | 2018-07-30 |  | 2018-06-21 | 2018-07-30 | 28d |  |  |  |  |  | 2514.67h |
| 36 | 1.2.1 | **Industrial design** | 26.67d | 2018-06-21 | 2018-07-27 |  | 2018-06-21 | 2018-07-27 | 26.67d |  |  |  |  |  | 1702.67h |
| 37 | 1.2.1.1 | Surveying of land and production flow | 1.17d | 2018-06-21 | 2018-06-22 | 34 | 2018-06-21 | 2018-06-22 | 1.17d | 0d |  | start no earlier than 2018-06-13 |  | Surveyor | 9.33h |
| 38 | 1.2.1.2 | Architectural design | 42.33d | 2018-06-22 | 2018-08-21 | 37 | 2018-06-22 | 2018-08-21 | 42.33d | 0d |  |  |  | Architect; Achitectural Company | 677.33h |
| 39 | 1.2.1.3 | Electrical system design | 42.33d | 2018-06-22 | 2018-08-21 | 37 | 2018-06-22 | 2018-08-21 | 42.33d | 0d |  | start no earlier than 2018-06-14 |  | Ollie Volta | 338.67h |
| 40 | 1.2.1.4 | Plumbing system design | 42.33d | 2018-06-22 | 2018-08-21 | 37 | 2018-06-22 | 2018-08-21 | 42.33d | 0d |  | start no earlier than 2018-06-14 |  | Randy Schepers; Plumbing Company | 677.33h |
| 41 | 1.2.2 | **Mechanical design** | 26.67d | 2018-06-21 | 2018-07-27 |  | 2018-06-21 | 2018-07-27 | 26.67d |  |  |  |  |  | 668h |
| 42 | 1.2.2.1 | **Production line control software program** | 26.67d | 2018-06-21 | 2018-07-27 |  | 2018-06-21 | 2018-07-27 | 26.67d |  |  |  |  |  | 333.33h |
| 43 | 1.2.2.1.1 | Debugging and testing | 20.83d | 2018-06-21 | 2018-07-19 | 34 | 2018-06-21 | 2018-07-19 | 20.83d | 1.83d | 0d | start no earlier than 2018-06-13 |  | Andy Johns; Production Train Software and Licence [1 Package] | 166.67h |
| 44 | 1.2.2.1.2 | Simulation | 20.83d | 2018-07-19 | 2018-08-17 | 43 | 2018-07-19 | 2018-08-17 | 20.83d | 1.83d |  | start no earlier than 2018-07-10 | 2018-08-21 | Andy Johns; Production Train Software and Licence [1 Package] | 166.67h |
| 45 | 1.2.2.2 | Production train design | 40.83d | 2018-06-21 | 2018-08-16 | 34 | 2018-06-21 | 2018-08-16 | 40.83d | 2.67d |  | start no earlier than 2018-06-13 |  | Miles Mchunu; Amos Mokoena | 334.67h |
| 46 | 1.2.3 | Design Approval | 1.17d | 2018-08-21 | 2018-08-22 | 45, 40, 38, 39, 44 | 2018-08-21 | 2018-08-22 | 1.17d | 0d |  | start no earlier than 2018-08-08 |  | Andy Johns; Miles Mchunu | 18.67h |
| 47 | 1.2.4 | **Progress meeting** | 0.67d | 2018-08-22 | 2018-08-23 |  | 2018-08-22 | 2018-08-23 | 0.67d |  |  |  |  |  | 125.33h |
| 48 | 1.2.4.1 | Review and approval of specifications | 1.17d | 2018-08-22 | 2018-08-23 | 46 | 2018-08-22 | 2018-08-23 | 1.17d | 0.5d |  | start no earlier than 2018-08-09 |  | Andy Johns; Daniel Lee; Miles Mchunu; Sylvia Moore | 37.33h |
| 49 | 1.2.4.2 | Review and approval of site plans | 1.17d | 2018-08-22 | 2018-08-23 | 46 | 2018-08-22 | 2018-08-23 | 1.17d | 0.5d |  | start no earlier than 2018-08-09 |  | Daniel Lee; Randy Schepers; Sylvia Moore | 28h |
| 50 | 1.2.4.3 | Distribution of specifications and site plans | 1.17d | 2018-08-22 | 2018-08-23 | 46 | 2018-08-22 | 2018-08-23 | 1.17d | 0.5d |  | start no earlier than 2018-08-09 |  | Daniel Lee; Sylvia Moore | 18.67h |
| 51 | 1.2.4.4 | Application of permits | 1.17d | 2018-08-22 | 2018-08-23 | 46 | 2018-08-22 | 2018-08-23 | 1.17d | 0.5d |  | start no earlier than 2018-08-09 |  | Daniel Lee; Randy Schepers; Sylvia Moore | 28h |
| 52 | 1.2.4.5 | Issuing of permits | 1.67d | 2018-08-22 | 2018-08-24 | 46 | 2018-08-22 | 2018-08-24 | 1.67d | 0d |  | start no earlier than 2018-08-09 |  | Local authorities | 13.33h |

| ID | WBS | Task | Duration | Start | Finish | Predecessors | Baseline start | Baseline finish | Baseline duration | Total slack | Free slack | Constraint | Resources | Work |
| --- | --- | --- | --- | --- | --- | --- | --- | --- | --- | --- | --- | --- | --- | --- |
| 53 | 1.3 | **Procurement management** | 8d | 2018-08-24 | 2018-09-05 |  | 2018-08-24 | 2018-09-05 | 8d |  |  |  |  | 461.33h |
| 54 | 1.3.1 | Equipment requirements and material analysis | 4.83d | 2018-08-24 | 2018-08-31 | 52 | 2018-08-24 | 2018-08-31 | 4.83d | 9d | 0d | start no earlier than 2018-08-10 | Amos Mokoena; Daniel Lee; Miles Mchunu; Ollie Volta; Justine Leakey; Manzi Nisela; Derek Rivett; Procurement Department | 309.33h |
| 55 | 1.3.2 | Supplier market research | 1.33d | 2018-08-31 | 2018-09-03 | 54 | 2018-08-31 | 2018-09-03 | 1.33d | 9d | 0d |  | Procurement Department | 10.67h |
| 56 | 1.3.3 | Devlope a source/outsourcing stategy | 1.17d | 2018-09-03 | 2018-09-04 | 55 | 2018-09-03 | 2018-09-04 | 1.17d | 9d | 0d |  | Procurement Department | 9.33h |
| 57 | 1.3.4 | Negotiate with suppliers | 5.5d | 2018-09-04 | 2018-09-12 | 56 | 2018-09-04 | 2018-09-12 | 5.5d | 9d |  |  | Daniel Lee; Sylvia Moore; Procurement Department | 132h |
| 58 | 1.4 | **Construction** | 226.5d | 2018-08-24 | 2019-07-08 |  | 2018-08-24 | 2019-07-08 | 226.5d | 0d |  |  |  | 4252.13h |
| 59 | 1.4.1 | Kick off meeting | 1d | 2018-08-24 | 2018-08-27 | 52, 49, 50, 51, 48 | 2018-08-24 | 2018-08-27 | 1d | 0d |  | start no earlier than 2018-06-28 | Amos Mokoena; Daniel Lee; Derek Rivett; Justine Leakey; Manzi Nisela; Ollie Volta; Sylvia Moore | 56h |
| 60 | 1.4.2 | Site-clearing | 20.83d | 2018-08-27 | 2018-09-25 | 59 | 2018-08-27 | 2018-09-25 | 20.83d | 0d |  |  | Daniel Lee | 166.67h |
| 61 | 1.4.3 | **Building of facility** | 119.83d | 2018-09-25 | 2019-03-11 |  | 2018-09-25 | 2019-03-11 | 119.83d | 0d |  |  |  | 3017.33h |
| 62 | 1.4.3.1 | Foundation and curing | 46.67d | 2018-09-25 | 2018-11-28 | 60, 57 | 2018-09-25 | 2018-11-28 | 46.67d | 0d |  |  | Daniel Lee; Derek Rivett; Portable Water [1 litre]; Precast Concrete; Steel Piles; Wood Piles; Extra Labour | 2053.33h |
| 63 | 1.4.3.2 | Steel construction | 16.17d | 2018-11-28 | 2018-12-20 | 62 | 2018-11-28 | 2018-12-20 | 16.17d | 0d |  |  | Derek Rivett; Fabricated Steel | 258.67h |
| 64 | 1.4.3.3 | Masonry work | 20.83d | 2018-12-21 | 2019-01-18 | 63 | 2018-12-21 | 2019-01-18 | 20.83d | 0d |  |  | Daniel Lee; Binding Wires [1 metre]; Bricks [1 Pallet]; Cement [1 kilogram]; Plywood [1 metre]; Portable Water [1 litre]; Sand [1 kilogram]; Paint [1 litre]; Paint Thiner [1 litre] | 166.67h |
| 65 | 1.4.3.4 | Roof construction | 20.83d | 2019-01-18 | 2019-02-18 | 64 | 2019-01-18 | 2019-02-18 | 20.83d | 0d |  |  | Justine Leakey; Fabricated Steel; Light Fibre Cement Board [1 metre]; Metal furring [1 metre] | 333.33h |
| 66 | 1.4.3.5 | Electrical and plumbing system installtion | 10.33d | 2019-02-18 | 2019-03-04 | 65 | 2019-02-18 | 2019-03-04 | 10.33d | 0d |  |  | Ollie Volta; Electrical Wires [1 metre]; Light Fixtures [1 unit]; Pipe Fittings [1 metre]; Plumbing Company; Connectors [1 unit]; Couplings [1 unit]; Valves [1 unit] | 165.33h |
| 67 | 1.4.3.6 | Inspection of the building | 5d | 2019-03-05 | 2019-03-11 | 66 | 2019-03-05 | 2019-03-11 | 5d | 0d |  |  | Daniel Lee | 40h |
| 68 | 1.4.4 | Install semi-automatic woodworking production train | 20.83d | 2019-03-12 | 2019-04-09 | 67 | 2019-03-12 | 2019-04-09 | 20.83d | 0d |  |  | Elias Makoti | 166.67h |
| 69 | 1.4.5 | Paint shop installation | 15d | 2019-04-09 | 2019-04-30 | 68 | 2019-04-09 | 2019-04-30 | 15d | 0d |  |  | Amos Mokoena | 120h |
| 70 | 1.4.6 | Hardware Installation | 10d | 2019-04-30 | 2019-05-14 | 69 | 2019-04-30 | 2019-05-14 | 10d | 0d |  |  | Elias Makoti | 80h |
| 71 | 1.4.7 | Software Installation | 5.5d | 2019-05-14 | 2019-05-22 | 70 | 2019-05-14 | 2019-05-22 | 5.5d | 0d |  |  | Andy Johns; Miles Mchunu | 88h |
| 72 | 1.4.8 | Install compressor | 5.5d | 2019-05-22 | 2019-05-29 | 71 | 2019-05-22 | 2019-05-29 | 5.5d | 0d |  |  | Amos Mokoena | 44h |
| 73 | 1.4.9 | Install Air-conditioning | 10.33d | 2019-05-29 | 2019-06-13 | 72 | 2019-05-29 | 2019-06-13 | 10.33d | 0d |  |  | Amos Mokoena | 82.67h |
| 74 | 1.4.10 | Inspection of installed equipment | 1.33d | 2019-06-13 | 2019-06-14 | 73 | 2019-06-13 | 2019-06-14 | 1.33d | 0d |  | start no earlier than 2019-04-05 | Daniel Lee; Miles Mchunu | 21.33h |
| 75 | 1.4.11 | Final inspections | 10.83d | 2019-06-14 | 2019-07-01 | 74 | 2019-06-14 | 2019-07-01 | 10.83d | 0d |  | start no earlier than 2019-04-08 | Local authorities [10%]; Daniel Lee; Sylvia Moore; Safety manager | 268.67h |
| 76 | 1.4.12 | Final approval | 5.5d | 2019-07-01 | 2019-07-08 | 75 | 2019-07-01 | 2019-07-08 | 5.5d | 0d |  |  | Local authorities [20%]; Daniel Lee; Sylvia Moore; Safety manager | 140.8h |

| ID | WBS | Task | Duration | Start | Finish | Predecessors | Baseline start | Baseline finish | Baseline duration | Total slack | Free slack | Constraint | Resources | Work |
| --- | --- | --- | --- | --- | --- | --- | --- | --- | --- | --- | --- | --- | --- | --- |
| 77 | 1.5 | **Commissioning** | 6.67d? | 2019-06-14 | 2019-06-25 |  | 2019-06-14 | 2019-06-25 | 6.67d? | 9.67d |  |  |  | 62.13h |
| 78 | 1.5.1 | Production start-up | 5.5d | 2019-06-14 | 2019-06-21 | 74 | 2019-06-14 | 2019-06-21 | 5.5d | 9.67d | 0d | start no earlier than 2019-03-22 | Miles Mchunu [20%]; Daniel Lee | 52.8h |
| 79 | 1.5.2 | project hand over | 1.17d? | 2019-06-24 | 2019-06-25 | 78 | 2019-06-24 | 2019-06-25 | 1.17d? | 9.67d |  |  | Sylvia Moore | 9.33h |
